# Aplicación Móvil para el pedido de Taxi

Schedule from MS Project, 2015-06-25 to 2015-09-24.
Microsoft Corporation

## Calendars

- Estándar: Mon-Fri 09:00-13:00, 15:00-19:00; Sat-Sun off.

## Schedule

| ID | WBS | Task | Duration | Start | Finish | Predecessors | Baseline start | Baseline finish | Baseline duration | Total slack | Free slack | Constraint |
| --- | --- | --- | --- | --- | --- | --- | --- | --- | --- | --- | --- | --- |
| 1 | 1 | **Análisis de Requisitos** | 16d | 2015-06-25 | 2015-07-16 |  | 2015-06-25 | 2015-07-15 | 15d? | 0d |  |  |
| 2 | 1.1 | **Análisis de Requerimientos** | 2d | 2015-06-25 | 2015-06-26 |  | 2015-06-25 | 2015-06-26 | 2d | 2d |  |  |
| 3 | 1.1.1 | Requerimientos Funcionales | 2d | 2015-06-25 | 2015-06-26 |  | 2015-06-25 | 2015-06-25 | 1d? | 2d | 0d |  |
| 4 | 1.1.2 | Requerimientos No Funcionales | 2d | 2015-06-25 | 2015-06-26 |  | 2015-06-25 | 2015-06-25 | 1d? | 2d | 0d |  |
| 5 | 1.2 | Modelo de Dominio | 3d | 2015-06-29 | 2015-07-01 | 4, 3 | 2015-06-29 | 2015-07-02 | 4d | 2d |  |  |
| 6 | 1.3 | Prototipación Rápida | 4d | 2015-07-06 | 2015-07-09 | 5 |  |  |  | 0d |  | start no earlier than 2015-07-06 |
| 7 | 1.4 | Modelo de Casos de Uso | 5d | 2015-07-10 | 2015-07-16 | 6 | 2015-07-02 | 2015-07-02 | 0d | 0d |  |  |
| 8 | 2 | **Análisis y Diseño Preliminar** | 6d | 2015-07-17 | 2015-07-24 |  | 2015-07-03 | 2015-07-15 | 9d | 0d |  |  |
| 9 | 2.1 | Descripción de Caso de Uso | 3d | 2015-07-17 | 2015-07-21 | 7 | 2015-07-03 | 2015-07-07 | 3d | 0d |  |  |
| 10 | 2.2 | Diagrama de Robustez | 3d | 2015-07-22 | 2015-07-24 | 9 | 2015-07-08 | 2015-07-13 | 4d | 0d |  |  |
| 11 | 3 | **Diseño** | 2d | 2015-07-27 | 2015-07-28 |  | 2015-07-15 | 2015-07-17 | 3d | 0d |  |  |
| 12 | 3.1 | Diagrama de Secuencia | 2d | 2015-07-27 | 2015-07-28 | 10 | 2015-07-15 | 2015-07-17 | 3d | 0d |  |  |
| 13 | 4 | **Implementación** | 29d | 2015-07-29 | 2015-09-07 |  | 2015-07-15 | 2015-07-16 | 2d | 0d |  |  |
| 14 | 4.1 | **Escribir / Generar Código** | 26d | 2015-07-29 | 2015-09-02 |  | 2015-07-15 | 2015-07-15 | 1d | 0d |  |  |
| 15 | 4.1.1 | Base de Datos | 4d | 2015-07-29 | 2015-08-03 | 12 |  |  |  | 18d |  |  |
| 16 | 4.1.2 | Aplicación Móvil | 22d | 2015-07-29 | 2015-08-27 | 12 |  |  |  | 0d |  |  |
| 17 | 4.1.3 | Sistema Web | 9d | 2015-07-29 | 2015-08-10 | 12 |  |  |  | 13d |  |  |
| 18 | 4.1.4 | Plan de Integración de la Iteración | 4d | 2015-08-28 | 2015-09-02 | 15, 16, 17 |  |  |  | 0d |  |  |
| 19 | 4.2 | Realización de Pruebas | 3d | 2015-09-03 | 2015-09-07 | 18 |  |  |  | 0d |  |  |
| 20 | 5 | **Presentación Final** | 13d | 2015-09-08 | 2015-09-24 |  |  |  |  | 0d |  |  |
| 21 | 5.1 | Integración de Documentación | 3d | 2015-09-08 | 2015-09-10 | 19 |  |  |  | 0d |  |  |
| 22 | 5.2 | Conclusiones | 10d | 2015-09-11 | 2015-09-24 | 21 |  |  |  | 0d |  |  |

Notes:
- 1: Esta es una tarea de resumen. Use las tareas de resumen para poder organizar un proyecto en secciones.
- 7: Esta es una tarea hito. Configure una tarea a una duración 0d para marcar un evento en el proyecto.
- 12: Las tareas que figuran con un marcador son tareas programadas manualmente. Úselas cuando no desee que el proyecto mueva la tarea. Además, puede introducir texto de forma libre en la duración, iniciar y finalizar campos o dejarlos en blanco si todavía n...
